# Projeto XPTO

Schedule from MS Project, 2025-05-06 to 2025-07-24, status date 2025-06-16, costs in R$, A marks actual dates.
SENAC RJ

## Calendars

- Senac: Mon-Fri 09:00-12:00, 13:00-18:00; Sat-Sun off.

## Resources

| Resource | Rate |
| --- | --- |
| Gerente do projeto | 60 |
| Patrocinador |  |
| Desenvolvedor Frontend |  |
| Desenvolvedor Java Pleno |  |
| Desenvolvedor Java Senior |  |
| Scrum Master |  |
| UX Designer |  |
| Product Owner |  |

## Schedule

| ID | WBS | Task | Duration | Start | Finish | Predecessors | Complete | Remaining | Baseline start | Baseline finish | Baseline duration | Total slack | Resources | Work | Actual work | Cost | Baseline cost | Actual cost |
| --- | --- | --- | --- | --- | --- | --- | --- | --- | --- | --- | --- | --- | --- | --- | --- | --- | --- | --- |
| 1 | 1 | **Iniciação** | 2d | 2025-05-06 A | 2025-05-07 A |  | 100% |  | 2025-05-06 | 2025-05-07 | 2d |  |  | 32h | 32h | 960 | 960 | 960 |
| 2 | 1.1 | Elaborar termo de abertura do projeto | 2d | 2025-05-06 A | 2025-05-07 A |  | 100% |  | 2025-05-06 | 2025-05-07 | 2d |  | Gerente do projeto [50%] | 8h | 8h | 480 | 480 | 480 |
| 3 | 1.2 | Aprovar termo de abertura do projeto | 2d | 2025-05-06 A | 2025-05-07 A | 2SS | 100% |  | 2025-05-06 | 2025-05-07 | 2d |  | Gerente do projeto [50%]; Patrocinador | 24h | 24h | 480 | 480 | 480 |
| 4 | 2 | **Planejamento** | 10d | 2025-05-08 A | 2025-05-21 A | 1 | 100% |  | 2025-05-08 | 2025-05-20 | 9d |  |  | 152h | 152h | 4,800 | 4,320 | 4,800 |
| 5 | 2.1 | Elaborar o Plano de Projeto | 1d | 2025-05-08 A | 2025-05-08 A |  | 100% |  | 2025-05-08 | 2025-05-08 | 1d |  | Gerente do projeto | 8h | 8h | 480 | 480 | 480 |
| 6 | 2.2 | Aprovar o Plano de Projeto | 1d | 2025-05-09 A | 2025-05-09 A | 5 | 100% |  | 2025-05-09 | 2025-05-09 | 1d |  | Patrocinador; Gerente do projeto | 16h | 16h | 480 | 480 | 480 |
| 7 | 2.3 | Realizar reunião Kick off | 1d | 2025-05-12 A | 2025-05-12 A | 6 | 100% |  | 2025-05-12 | 2025-05-12 | 1d |  | Desenvolvedor Frontend; Desenvolvedor Java Pleno; Desenvolvedor Java Senior; Patrocinador; Scrum Master; UX Designer; Product Owner; Gerente do projeto | 64h | 64h | 480 | 480 | 480 |
| 8 | 2.4 | Preparar estrutura para a equipe | 4d | 2025-05-13 A | 2025-05-16 A | 7 | 100% |  | 2025-05-13 | 2025-05-15 | 3d |  | Gerente do projeto | 32h | 32h | 1,920 | 1,440 | 1,920 |
| 9 | 2.5 | Realizar contratações | 2d | 2025-05-19 A | 2025-05-20 A | 8 | 100% |  | 2025-05-16 | 2025-05-19 | 2d |  | Gerente do projeto | 16h | 16h | 960 | 960 | 960 |
| 10 | 2.6 | Elaborar e priorizar o Backlog do Produto (Product Backlog) | 1d | 2025-05-21 A | 2025-05-21 A | 9 | 100% |  | 2025-05-20 | 2025-05-20 | 1d |  | Product Owner; Gerente do projeto | 16h | 16h | 480 | 480 | 480 |
| 11 | 3 | **Execução e Controle** | 46d | 2025-05-21 A | 2025-07-24 |  | 23% | 35.29d | 2025-05-21 | 2025-07-22 | 45d | 0d |  | 2288h | 840h | 22,080 | 21,600 | 8,160 |
| 12 | 3.1 | **Execução** | 46d | 2025-05-22 A | 2025-07-24 |  | 37% | 29d | 2025-05-21 | 2025-07-22 | 45d | 0d |  | 2288h | 840h | 22,080 | 21,600 | 8,160 |
| 13 | 3.1.1 | **Sprint 1** | 9d | 2025-05-22 A | 2025-06-03 A | 4 | 100% |  | 2025-05-21 | 2025-06-02 | 9d |  |  | 448h | 448h | 4,320 | 4,320 | 4,320 |
| 14 | 3.1.1.1 | Planejar a Sprint (Sprint Planning) | 1d | 2025-05-22 A | 2025-05-22 A |  | 100% |  | 2025-05-21 | 2025-05-21 | 1d |  | Desenvolvedor Frontend; Desenvolvedor Java Pleno; Desenvolvedor Java Senior; Product Owner; Scrum Master; UX Designer; Gerente do projeto | 56h | 56h | 480 | 480 | 480 |
| 15 | 3.1.1.2 | Executar a sprint | 7d | 2025-05-23 A | 2025-06-02 A | 14 | 100% |  | 2025-05-22 | 2025-05-30 | 7d |  | Desenvolvedor Frontend; Desenvolvedor Java Pleno; Desenvolvedor Java Senior; Scrum Master; UX Designer; Gerente do projeto | 336h | 336h | 3,360 | 3,360 | 3,360 |
| 16 | 3.1.1.3 | Revisão da Sprint (Sprint Review) | 4h | 2025-06-03 A | 2025-06-03 A | 15 | 100% |  | 2025-06-02 | 2025-06-02 | 4h |  | Desenvolvedor Frontend; Desenvolvedor Java Pleno; Desenvolvedor Java Senior; Product Owner; Scrum Master; UX Designer; Gerente do projeto | 28h | 28h | 240 | 240 | 240 |
| 17 | 3.1.1.4 | Retrospectiva da Sprint (Sprint Retrospective) | 4h | 2025-06-03 A | 2025-06-03 A | 16 | 100% |  | 2025-06-02 | 2025-06-02 | 4h |  | Desenvolvedor Frontend; Desenvolvedor Java Pleno; Desenvolvedor Java Senior; Product Owner; Scrum Master; UX Designer; Gerente do projeto | 28h | 28h | 240 | 240 | 240 |
| 18 | 3.1.2 | **Sprint 2** | 9d | 2025-06-04 A | 2025-06-16 | 13 | 89% | 1d | 2025-06-03 | 2025-06-13 | 9d | 0d |  | 448h | 392h | 4,320 | 4,320 | 3,840 |
| 19 | 3.1.2.1 | Planejar a Sprint (Sprint Planning) | 1d | 2025-06-04 A | 2025-06-04 A |  | 100% |  | 2025-06-03 | 2025-06-03 | 1d |  | Desenvolvedor Frontend; Desenvolvedor Java Pleno; Desenvolvedor Java Senior; Product Owner; Scrum Master; UX Designer; Gerente do projeto | 56h | 56h | 480 | 480 | 480 |
| 20 | 3.1.2.2 | Executar a sprint | 7d | 2025-06-05 A | 2025-06-13 A | 19 | 100% |  | 2025-06-04 | 2025-06-12 | 7d |  | Desenvolvedor Frontend; Desenvolvedor Java Pleno; Desenvolvedor Java Senior; Scrum Master; UX Designer; Gerente do projeto | 336h | 336h | 3,360 | 3,360 | 3,360 |
| 21 | 3.1.2.3 | Revisão da Sprint (Sprint Review) | 4h | 2025-06-16 | 2025-06-16 | 20 |  |  | 2025-06-13 | 2025-06-13 | 4h | 0d | Desenvolvedor Frontend; Desenvolvedor Java Pleno; Desenvolvedor Java Senior; Product Owner; Scrum Master; UX Designer; Gerente do projeto | 28h |  | 240 | 240 |  |
| 22 | 3.1.2.4 | Retrospectiva da Sprint (Sprint Retrospective) | 4h | 2025-06-16 | 2025-06-16 | 21 |  |  | 2025-06-13 | 2025-06-13 | 4h | 0d | Desenvolvedor Frontend; Desenvolvedor Java Pleno; Desenvolvedor Java Senior; Product Owner; Scrum Master; UX Designer; Gerente do projeto | 28h |  | 240 | 240 |  |
| 23 | 3.1.3 | **Sprint 3** | 9d | 2025-06-17 | 2025-06-27 | 18 |  |  | 2025-06-16 | 2025-06-26 | 9d | 0d |  | 448h |  | 4,320 | 4,320 |  |
| 24 | 3.1.3.1 | Planejar a Sprint (Sprint Planning) | 1d | 2025-06-17 | 2025-06-17 |  |  |  | 2025-06-16 | 2025-06-16 | 1d | 0d | Desenvolvedor Frontend; Desenvolvedor Java Pleno; Desenvolvedor Java Senior; Product Owner; Scrum Master; UX Designer; Gerente do projeto | 56h |  | 480 | 480 |  |
| 25 | 3.1.3.2 | Executar a sprint | 7d | 2025-06-18 | 2025-06-26 | 24 |  |  | 2025-06-17 | 2025-06-25 | 7d | 0d | Desenvolvedor Frontend; Desenvolvedor Java Pleno; Desenvolvedor Java Senior; Scrum Master; UX Designer; Gerente do projeto | 336h |  | 3,360 | 3,360 |  |
| 26 | 3.1.3.3 | Revisão da Sprint (Sprint Review) | 4h | 2025-06-27 | 2025-06-27 | 25 |  |  | 2025-06-26 | 2025-06-26 | 4h | 0d | Desenvolvedor Frontend; Desenvolvedor Java Pleno; Desenvolvedor Java Senior; Product Owner; Scrum Master; UX Designer; Gerente do projeto | 28h |  | 240 | 240 |  |
| 27 | 3.1.3.4 | Retrospectiva da Sprint (Sprint Retrospective) | 4h | 2025-06-27 | 2025-06-27 | 26 |  |  | 2025-06-26 | 2025-06-26 | 4h | 0d | Desenvolvedor Frontend; Desenvolvedor Java Pleno; Desenvolvedor Java Senior; Product Owner; Scrum Master; UX Designer; Gerente do projeto | 28h |  | 240 | 240 |  |

| ID | WBS | Task | Duration | Start | Finish | Predecessors | Baseline start | Baseline finish | Baseline duration | Total slack | Constraint | Resources | Work | Cost | Baseline cost |
| --- | --- | --- | --- | --- | --- | --- | --- | --- | --- | --- | --- | --- | --- | --- | --- |
| 28 | 3.1.4 | **Sprint 4** | 10d | 2025-06-30 | 2025-07-11 | 23 | 2025-06-27 | 2025-07-09 | 9d | 0d |  |  | 496h | 4,800 | 4,320 |
| 29 | 3.1.4.1 | Planejar a Sprint (Sprint Planning) | 1d | 2025-06-30 | 2025-06-30 |  | 2025-06-27 | 2025-06-27 | 1d | 0d |  | Desenvolvedor Frontend; Desenvolvedor Java Pleno; Desenvolvedor Java Senior; Product Owner; Scrum Master; UX Designer; Gerente do projeto | 56h | 480 | 480 |
| 30 | 3.1.4.2 | Executar a sprint | 8d | 2025-07-01 | 2025-07-10 | 29 | 2025-06-30 | 2025-07-08 | 7d | 0d | finish no earlier than 2025-07-10 | Desenvolvedor Frontend; Desenvolvedor Java Pleno; Desenvolvedor Java Senior; Scrum Master; UX Designer; Gerente do projeto | 384h | 3,840 | 3,360 |
| 31 | 3.1.4.3 | Revisão da Sprint (Sprint Review) | 4h | 2025-07-11 | 2025-07-11 | 30 | 2025-07-09 | 2025-07-09 | 4h | 0d |  | Desenvolvedor Frontend; Desenvolvedor Java Pleno; Desenvolvedor Java Senior; Product Owner; Scrum Master; UX Designer; Gerente do projeto | 28h | 240 | 240 |
| 32 | 3.1.4.4 | Retrospectiva da Sprint (Sprint Retrospective) | 4h | 2025-07-11 | 2025-07-11 | 31 | 2025-07-09 | 2025-07-09 | 4h | 0d |  | Desenvolvedor Frontend; Desenvolvedor Java Pleno; Desenvolvedor Java Senior; Product Owner; Scrum Master; UX Designer; Gerente do projeto | 28h | 240 | 240 |
| 33 | 3.1.5 | **Sprint 5** | 9d | 2025-07-14 | 2025-07-24 | 28 | 2025-07-10 | 2025-07-22 | 9d | 0d |  |  | 448h | 4,320 | 4,320 |
| 34 | 3.1.5.1 | Planejar a Sprint (Sprint Planning) | 1d | 2025-07-14 | 2025-07-14 |  | 2025-07-10 | 2025-07-10 | 1d | 0d |  | Desenvolvedor Frontend; Desenvolvedor Java Pleno; Desenvolvedor Java Senior; Product Owner; Scrum Master; UX Designer; Gerente do projeto | 56h | 480 | 480 |
| 35 | 3.1.5.2 | Executar a sprint | 7d | 2025-07-15 | 2025-07-23 | 34 | 2025-07-11 | 2025-07-21 | 7d | 0d |  | Desenvolvedor Frontend; Desenvolvedor Java Pleno; Desenvolvedor Java Senior; Scrum Master; UX Designer; Gerente do projeto | 336h | 3,360 | 3,360 |
| 36 | 3.1.5.3 | Revisão da Sprint (Sprint Review) | 4h | 2025-07-24 | 2025-07-24 | 35 | 2025-07-22 | 2025-07-22 | 4h | 0d |  | Desenvolvedor Frontend; Desenvolvedor Java Pleno; Desenvolvedor Java Senior; Product Owner; Scrum Master; UX Designer; Gerente do projeto | 28h | 240 | 240 |
| 37 | 3.1.5.4 | Retrospectiva da Sprint (Sprint Retrospective) | 4h | 2025-07-24 | 2025-07-24 | 36 | 2025-07-22 | 2025-07-22 | 4h | 0d |  | Desenvolvedor Frontend; Desenvolvedor Java Pleno; Desenvolvedor Java Senior; Product Owner; Scrum Master; UX Designer; Gerente do projeto | 28h | 240 | 240 |
| 38 | 3.2 | **Controle** | 44d | 2025-05-21 | 2025-07-22 | 4 | 2025-05-21 | 2025-07-22 | 45d | 2d |  |  |  |  |  |
| 39 | 3.2.1 | **Cronograma** | 41d | 2025-05-26 | 2025-07-21 |  | 2025-05-26 | 2025-07-21 | 41d | 3d |  |  |  |  |  |
| 40 | 3.2.1.1 | **Revisar cronograma** | 41d | 2025-05-26 | 2025-07-21 |  | 2025-05-26 | 2025-07-21 | 41d | 3d |  |  |  |  |  |
| 41 | 3.2.1.1.1 | Revisar cronograma 1 | 1d | 2025-05-26 | 2025-05-26 |  | 2025-05-26 | 2025-05-26 | 1d | 43d | start no earlier than 2025-05-26 | Gerente do projeto |  |  |  |
| 42 | 3.2.1.1.2 | Revisar cronograma 2 | 1d | 2025-06-02 | 2025-06-02 |  | 2025-06-02 | 2025-06-02 | 1d | 38d | start no earlier than 2025-06-02 | Gerente do projeto |  |  |  |
| 43 | 3.2.1.1.3 | Revisar cronograma 3 | 1d | 2025-06-09 | 2025-06-09 |  | 2025-06-09 | 2025-06-09 | 1d | 33d | start no earlier than 2025-06-09 | Gerente do projeto |  |  |  |
| 44 | 3.2.1.1.4 | Revisar cronograma 4 | 1d | 2025-06-16 | 2025-06-16 |  | 2025-06-16 | 2025-06-16 | 1d | 28d | start no earlier than 2025-06-16 | Gerente do projeto |  |  |  |
| 45 | 3.2.1.1.5 | Revisar cronograma 5 | 1d | 2025-06-23 | 2025-06-23 |  | 2025-06-23 | 2025-06-23 | 1d | 23d | start no earlier than 2025-06-23 | Gerente do projeto |  |  |  |
| 46 | 3.2.1.1.6 | Revisar cronograma 6 | 1d | 2025-06-30 | 2025-06-30 |  | 2025-06-30 | 2025-06-30 | 1d | 18d | start no earlier than 2025-06-30 | Gerente do projeto |  |  |  |
| 47 | 3.2.1.1.7 | Revisar cronograma 7 | 1d | 2025-07-07 | 2025-07-07 |  | 2025-07-07 | 2025-07-07 | 1d | 13d | start no earlier than 2025-07-07 | Gerente do projeto |  |  |  |
| 48 | 3.2.1.1.8 | Revisar cronograma 8 | 1d | 2025-07-14 | 2025-07-14 |  | 2025-07-14 | 2025-07-14 | 1d | 8d | start no earlier than 2025-07-14 | Gerente do projeto |  |  |  |
| 49 | 3.2.1.1.9 | Revisar cronograma 9 | 1d | 2025-07-21 | 2025-07-21 |  | 2025-07-21 | 2025-07-21 | 1d | 3d | start no earlier than 2025-07-21 | Gerente do projeto |  |  |  |
| 50 | 3.2.2 | **Comunicação** | 41d | 2025-05-27 | 2025-07-22 |  | 2025-05-27 | 2025-07-22 | 41d | 2d |  |  |  |  |  |
| 51 | 3.2.2.1 | **Revisar plano de comunicação** | 41d | 2025-05-27 | 2025-07-22 |  | 2025-05-27 | 2025-07-22 | 41d | 2d |  |  |  |  |  |
| 52 | 3.2.2.1.1 | Revisar plano de comunicação 1 | 1d | 2025-05-27 | 2025-05-27 |  | 2025-05-27 | 2025-05-27 | 1d | 42d | start no earlier than 2025-05-27 | Gerente do projeto |  |  |  |
| 53 | 3.2.2.1.2 | Revisar plano de comunicação 2 | 1d | 2025-06-03 | 2025-06-03 |  | 2025-06-03 | 2025-06-03 | 1d | 37d | start no earlier than 2025-06-03 | Gerente do projeto |  |  |  |
| 54 | 3.2.2.1.3 | Revisar plano de comunicação 3 | 1d | 2025-06-10 | 2025-06-10 |  | 2025-06-10 | 2025-06-10 | 1d | 32d | start no earlier than 2025-06-10 | Gerente do projeto |  |  |  |
| 55 | 3.2.2.1.4 | Revisar plano de comunicação 4 | 1d | 2025-06-17 | 2025-06-17 |  | 2025-06-17 | 2025-06-17 | 1d | 27d | start no earlier than 2025-06-17 | Gerente do projeto |  |  |  |
| 56 | 3.2.2.1.5 | Revisar plano de comunicação 5 | 1d | 2025-06-24 | 2025-06-24 |  | 2025-06-24 | 2025-06-24 | 1d | 22d | start no earlier than 2025-06-24 | Gerente do projeto |  |  |  |
| 57 | 3.2.2.1.6 | Revisar plano de comunicação 6 | 1d | 2025-07-01 | 2025-07-01 |  | 2025-07-01 | 2025-07-01 | 1d | 17d | start no earlier than 2025-07-01 | Gerente do projeto |  |  |  |
| 58 | 3.2.2.1.7 | Revisar plano de comunicação 7 | 1d | 2025-07-08 | 2025-07-08 |  | 2025-07-08 | 2025-07-08 | 1d | 12d | start no earlier than 2025-07-08 | Gerente do projeto |  |  |  |
| 59 | 3.2.2.1.8 | Revisar plano de comunicação 8 | 1d | 2025-07-15 | 2025-07-15 |  | 2025-07-15 | 2025-07-15 | 1d | 7d | start no earlier than 2025-07-15 | Gerente do projeto |  |  |  |
| 60 | 3.2.2.1.9 | Revisar plano de comunicação 9 | 1d | 2025-07-22 | 2025-07-22 |  | 2025-07-22 | 2025-07-22 | 1d | 2d | start no earlier than 2025-07-22 | Gerente do projeto |  |  |  |

| ID | WBS | Task | Duration | Start | Finish | Predecessors | Baseline start | Baseline finish | Baseline duration | Total slack | Free slack | Constraint | Resources | Work | Cost | Baseline cost |
| --- | --- | --- | --- | --- | --- | --- | --- | --- | --- | --- | --- | --- | --- | --- | --- | --- |
| 61 | 3.2.3 | **Riscos** | 40d | 2025-05-21 | 2025-07-16 |  | 2025-05-21 | 2025-07-16 | 41d | 6d |  |  |  |  |  |  |
| 62 | 3.2.3.1 | **Revisar plano de gerenciamento de riscos** | 40d | 2025-05-21 | 2025-07-16 |  | 2025-05-21 | 2025-07-16 | 41d | 6d |  |  |  |  |  |  |
| 63 | 3.2.3.1.1 | Revisar plano de gerenciamento de riscos 1 | 1d | 2025-05-21 | 2025-05-22 |  | 2025-05-21 | 2025-05-21 | 1d | 45d |  | start no earlier than 2025-05-21 | Gerente do projeto |  |  |  |
| 64 | 3.2.3.1.2 | Revisar plano de gerenciamento de riscos 2 | 1d | 2025-05-28 | 2025-05-28 |  | 2025-05-28 | 2025-05-28 | 1d | 41d |  | start no earlier than 2025-05-28 | Gerente do projeto |  |  |  |
| 65 | 3.2.3.1.3 | Revisar plano de gerenciamento de riscos 3 | 1d | 2025-06-04 | 2025-06-04 |  | 2025-06-04 | 2025-06-04 | 1d | 36d |  | start no earlier than 2025-06-04 | Gerente do projeto |  |  |  |
| 66 | 3.2.3.1.4 | Revisar plano de gerenciamento de riscos 4 | 1d | 2025-06-11 | 2025-06-11 |  | 2025-06-11 | 2025-06-11 | 1d | 31d |  | start no earlier than 2025-06-11 | Gerente do projeto |  |  |  |
| 67 | 3.2.3.1.5 | Revisar plano de gerenciamento de riscos 5 | 1d | 2025-06-18 | 2025-06-18 |  | 2025-06-18 | 2025-06-18 | 1d | 26d |  | start no earlier than 2025-06-18 | Gerente do projeto |  |  |  |
| 68 | 3.2.3.1.6 | Revisar plano de gerenciamento de riscos 6 | 1d | 2025-06-25 | 2025-06-25 |  | 2025-06-25 | 2025-06-25 | 1d | 21d |  | start no earlier than 2025-06-25 | Gerente do projeto |  |  |  |
| 69 | 3.2.3.1.7 | Revisar plano de gerenciamento de riscos 7 | 1d | 2025-07-02 | 2025-07-02 |  | 2025-07-02 | 2025-07-02 | 1d | 16d |  | start no earlier than 2025-07-02 | Gerente do projeto |  |  |  |
| 70 | 3.2.3.1.8 | Revisar plano de gerenciamento de riscos 8 | 1d | 2025-07-09 | 2025-07-09 |  | 2025-07-09 | 2025-07-09 | 1d | 11d |  | start no earlier than 2025-07-09 | Gerente do projeto |  |  |  |
| 71 | 3.2.3.1.9 | Revisar plano de gerenciamento de riscos 9 | 1d | 2025-07-16 | 2025-07-16 |  | 2025-07-16 | 2025-07-16 | 1d | 6d |  | start no earlier than 2025-07-16 | Gerente do projeto |  |  |  |
| 72 | 4 | **Encerramento** | 2d | 2025-07-17 | 2025-07-18 | 11 | 2025-07-23 | 2025-07-24 | 2d | 4d |  |  |  | 24h | 960 | 960 |
| 73 | 4.1 | Elaborar o Termo de Encerramento do Projeto | 1d | 2025-07-17 | 2025-07-17 |  | 2025-07-23 | 2025-07-23 | 1d | 4d | 0d | start no earlier than 2025-07-17 | Gerente do projeto | 8h | 480 | 480 |
| 74 | 4.2 | Aprovar o Termo de Encerramento do Projeto | 1d | 2025-07-18 | 2025-07-18 | 73 | 2025-07-24 | 2025-07-24 | 1d | 4d |  |  | Patrocinador; Gerente do projeto | 16h | 480 | 480 |
